# RSTB Jadwal Tahap 9

Schedule from MS Project XML, 2028-01-03 to 2029-11-19.

## Schedule

| ID | Task | Duration | Start | Finish | Predecessors | Constraint |
| --- | --- | --- | --- | --- | --- | --- |
| 1 | PER Persiapan: uitzet, pagar, mobilisasi alat | 1.5mo | 2028-01-03 | 2028-02-14 |  | start no earlier than 2028-01-03 |
| 2 | LHN Pematangan lahan (urugan, perkuatan tepi sungai) | 2.5mo | 2028-01-17 | 2028-03-27 | 1SS+10d | start no earlier than 2028-01-17 |
| 3 | TB Tiang bor Ø800 (321 tiang, 2 rig) | 5mo | 2028-02-14 | 2028-07-03 | 2SS+20d | start no earlier than 2028-02-14 |
| 4 | GAL Galian, dewatering, pile cap, sloof, pelat LT1, pit lift | 3.5mo | 2028-04-10 | 2028-07-17 | 3SS+40d | start no earlier than 2028-04-10 |
| 5 | STR1 Struktur LT1 (kolom/dinding inti + pelat LT2) | 1.25mo | 2028-05-22 | 2028-06-26 | 4SS+30d | start no earlier than 2028-05-22 |
| 6 | STR2 Struktur LT2 (+ pelat LT3, atap podium) | 1.25mo | 2028-06-26 | 2028-07-31 | 5 | start no earlier than 2028-06-26 |
| 7 | STR3 Struktur LT3 (+ pelat LT4) | 1.25mo | 2028-07-31 | 2028-09-04 | 6 | start no earlier than 2028-07-31 |
| 8 | STR4 Struktur LT4 (+ pelat LT5) | 1mo | 2028-09-04 | 2028-10-02 | 7 | start no earlier than 2028-09-04 |
| 9 | STR5 Struktur LT5 (+ pelat LT6) | 1mo | 2028-10-02 | 2028-10-30 | 8 | start no earlier than 2028-10-02 |
| 10 | STR6 Struktur LT6 (+ pelat atap) | 1mo | 2028-10-30 | 2028-11-27 | 9 | start no earlier than 2028-10-30 |
| 11 | STR7 Struktur atap (ruang alat, tangki, dek helipad) | 1mo | 2028-11-27 | 2028-12-25 | 10 | start no earlier than 2028-11-27 |
| 12 | ARS Arsitektur dalam: dinding, plester, lantai, plafon, pintu, cat | 10mo | 2028-09-04 | 2029-06-11 | 7 | start no earlier than 2028-09-04 |
| 13 | FAS Fasad kaca dan panel komposit | 6mo | 2028-10-02 | 2029-03-19 | 8 | start no earlier than 2028-10-02 |
| 14 | MEP1 MEP instalasi kasar (pipa, kabel, ducting, sprinkler) | 11mo | 2028-07-31 | 2029-06-04 | 6 | start no earlier than 2028-07-31 |
| 15 | MEP2 MEP alat utama (chiller, genset, gas medis) dan finishing | 7.5mo | 2029-02-26 | 2029-09-24 | 14SS+150d | start no earlier than 2029-02-26 |
| 16 | LIF Lift (pemasangan dan uji) | 6.5mo | 2028-12-25 | 2029-06-25 | 11 | start no earlier than 2028-12-25 |
| 17 | TPK Tapak: jalan, parkir, drainase, taman, dermaga | 5mo | 2029-02-05 | 2029-06-25 | 11FS+30d | start no earlier than 2029-02-05 |
| 18 | UJI Uji fungsi, commissioning, pembersihan, serah terima | 2mo | 2029-09-24 | 2029-11-19 | 12, 13, 15, 16, 17 | start no earlier than 2029-09-24 |
| 19 | TC Sewa tower crane 2 unit (struktur LT1 s.d. fasad) | 10.75mo | 2028-05-22 | 2029-03-19 |  | start no earlier than 2028-05-22 |
| 20 | MP Manajemen lapangan: direksi keet, listrik/air kerja, dokumentasi | 24.5mo | 2028-01-03 | 2029-11-19 |  | start no earlier than 2028-01-03 |
| 21 | SMKK Penerapan SMKK (9 komponen) | 24.5mo | 2028-01-03 | 2029-11-19 |  | start no earlier than 2028-01-03 |

Notes:
- 1: Bobot 0.624 %; sumber [Asumsi]
- 2: Bobot 5.033 %; sumber [Asumsi]
- 3: Bobot 13.338 %; sumber SE 47/2026 Lamp. II hal. 187-188
- 4: Bobot 5.432 %; sumber [Asumsi]
- 5: Bobot 1.465 %; sumber [Asumsi] siklus K9-4
- 6: Bobot 1.465 %; sumber [Asumsi] siklus K9-4
- 7: Bobot 1.465 %; sumber [Asumsi] siklus K9-4
- 8: Bobot 1.465 %; sumber [Asumsi] siklus K9-4
- 9: Bobot 1.465 %; sumber [Asumsi] siklus K9-4
- 10: Bobot 1.465 %; sumber [Asumsi] siklus K9-4
- 11: Bobot 1.465 %; sumber [Asumsi] siklus K9-4
- 12: Bobot 10.933 %; sumber [Asumsi]
- 13: Bobot 5.500 %; sumber [Asumsi]
- 14: Bobot 22.355 %; sumber [Asumsi] K9-5
- 15: Bobot 14.904 %; sumber [Asumsi] K9-5
- 16: Bobot 6.456 %; sumber [Asumsi]
- 17: Bobot 1.410 %; sumber [Asumsi]
- 18: Bobot 0.060 %; sumber [Asumsi]
- 19: Bobot 1.885 %; sumber K9-6
- 20: Bobot 0.747 %; sumber K9-6
- 21: Bobot 1.069 %; sumber K9-6
